# Proyecto de Graduación LoRA-HDL-QA

Schedule from MS Project XML, 2026-02-02 to 2026-09-25.

## Calendars

- Pablo Flores: Mon-Fri 08:00-12:00, 13:00-17:00; Sat-Sun off.

## Resources

| Resource | Rate |
| --- | --- |
| Unassigned |  |
| Pablo Flores | 80 |
| MacBook M1 2020 |  |

## Schedule

| ID | WBS | Task | Duration | Start | Finish | Predecessors | Constraint | Resources |
| --- | --- | --- | --- | --- | --- | --- | --- | --- |
| 1 | 0 | **Proyecto de Graduación LoRA-HDL-QA** | 170d | 2026-02-02 | 2026-09-25 |  |  |  |
| 2 | 1.1 | **INICIO** | 19.5d | 2026-02-02 | 2026-02-27 |  |  |  |
| 3 | 1.1.1 | **Inscripción del Tema** | 10d | 2026-02-02 | 2026-02-13 |  |  |  |
| 4 | 1.1.1.1 | Revisar normativo y reglamento de graduación | 1d | 2026-02-02 | 2026-02-02 |  |  | Pablo Flores |
| 5 | 1.1.1.2 | Delimitar el tema de investigación | 2d | 2026-02-03 | 2026-02-04 | 4 |  | Pablo Flores |
| 6 | 1.1.1.3 | Preparar formularios y documentación | 1d | 2026-02-05 | 2026-02-05 | 5 |  | Pablo Flores |
| 7 | 1.1.1.4 | Presentar solicitud formal ante la facultad | 0.38d | 2026-02-06 | 2026-02-06 | 6 |  | Pablo Flores |
| 8 | 1.1.1.5 | Período de espera — resolución institucional | 4.88d | 2026-02-06 | 2026-02-13 | 7 | start no later than 2026-02-06 | Pablo Flores |
| 9 | 1.1.1.6 | Recibir aprobación formal del tema | 0.5d | 2026-02-13 | 2026-02-13 | 8 | start no later than 2026-02-13 | Pablo Flores |
| 10 | 1.1.2 | **Asignación de Asesor** | 10.5d | 2026-02-03 | 2026-02-17 |  |  |  |
| 11 | 1.1.2.1 | Identificar y evaluar candidatos a asesor | 1d | 2026-02-03 | 2026-02-03 | 4 |  | Pablo Flores |
| 12 | 1.1.2.2 | Contactar y reunirse con candidatos | 1d | 2026-02-04 | 2026-02-04 | 11 |  | Pablo Flores |
| 13 | 1.1.2.3 | Seleccionar asesor definitivo | 0.38d | 2026-02-05 | 2026-02-05 | 12 |  | Pablo Flores |
| 14 | 1.1.2.4 | Formalizar carta de asignación del asesor | 0.38d | 2026-02-16 | 2026-02-16 | 9, 13 |  | Pablo Flores |
| 15 | 1.1.2.5 | Primera reunión de trabajo con asesor | 0.88d | 2026-02-16 | 2026-02-17 | 14 | start no later than 2026-02-16 | Pablo Flores |
| 16 | 1.1.3 | **Plan del Proyecto** | 8d | 2026-02-17 | 2026-02-27 |  |  |  |
| 17 | 1.1.3.1 | Definir alcance, supuestos y restricciones | 1.88d | 2026-02-17 | 2026-02-19 | 15 | start no later than 2026-02-17 | Pablo Flores |
| 18 | 1.1.3.2 | Elaborar EDT (WBS) del proyecto | 1.88d | 2026-02-19 | 2026-02-23 | 17 | start no later than 2026-02-19 | Pablo Flores |
| 19 | 1.1.3.3 | Elaborar cronograma y línea base de tiempo | 1.88d | 2026-02-23 | 2026-02-25 | 18 | start no later than 2026-02-23 | Pablo Flores |
| 20 | 1.1.3.4 | Identificar y evaluar riesgos | 0.88d | 2026-02-23 | 2026-02-24 | 18 | start no later than 2026-02-23 | Pablo Flores |
| 21 | 1.1.3.5 | Elaborar plan de comunicación y seguimiento | 0.88d | 2026-02-23 | 2026-02-24 | 18 | start no later than 2026-02-23 | Pablo Flores |
| 22 | 1.1.3.6 | Revisión y aprobación del plan con asesor | 1.88d | 2026-02-25 | 2026-02-27 | 19, 20, 21 | start no later than 2026-02-25 | Pablo Flores |
| 23 | 1.2 | **PLANIFICACIÓN** | 31d | 2026-02-27 | 2026-04-13 | 22 |  |  |
| 24 | 1.2.1 | **Anteproyecto** | 20d | 2026-02-27 | 2026-03-27 |  |  |  |
| 25 | 1.2.1.1 | Revisión de literatura sobre el problema | 2.88d | 2026-02-27 | 2026-03-04 | 22 | start no later than 2026-02-27 | Pablo Flores |
| 26 | 1.2.1.2 | Redactar planteamiento del problema | 2.88d | 2026-03-04 | 2026-03-09 | 25 | start no later than 2026-03-04 | Pablo Flores; MacBook M1 2020 |
| 27 | 1.2.1.3 | Definir objetivos general y específicos | 1.88d | 2026-03-09 | 2026-03-11 | 26 | start no later than 2026-03-09 | Pablo Flores |
| 28 | 1.2.1.4 | Plantear hipótesis de investigación | 0.88d | 2026-03-11 | 2026-03-12 | 27 | start no later than 2026-03-11 | Pablo Flores |
| 29 | 1.2.1.5 | Escribir justificación del proyecto | 1.88d | 2026-03-11 | 2026-03-13 | 27 | start no later than 2026-03-11 | Pablo Flores |
| 30 | 1.2.1.6 | Redactar documento completo de anteproyecto | 2.88d | 2026-03-13 | 2026-03-18 | 28, 29 | start no later than 2026-03-13 | Pablo Flores; MacBook M1 2020 |
| 31 | 1.2.1.7 | Revisión del anteproyecto con asesor | 1.88d | 2026-03-18 | 2026-03-20 | 30 | start no later than 2026-03-18 | Pablo Flores |
| 32 | 1.2.1.8 | Presentar anteproyecto ante comité evaluador | 0.88d | 2026-03-20 | 2026-03-23 | 31 | start no later than 2026-03-20 | Pablo Flores |
| 33 | 1.2.1.9 | Período de espera — aprobación del comité | 3.88d | 2026-03-23 | 2026-03-27 | 32 | start no later than 2026-03-23 | Pablo Flores |

| ID | WBS | Task | Duration | Start | Finish | Predecessors | Constraint | Resources |
| --- | --- | --- | --- | --- | --- | --- | --- | --- |
| 34 | 1.2.2 | **Diseño Metodológico** | 11d | 2026-03-27 | 2026-04-13 |  |  |  |
| 35 | 1.2.2.1 | Revisar y comparar metodologías de investigación | 1.88d | 2026-03-27 | 2026-03-31 | 33 | start no later than 2026-03-27 | Pablo Flores |
| 36 | 1.2.2.2 | Seleccionar y justificar metodología adoptada | 1.88d | 2026-03-31 | 2026-04-02 | 35 | start no later than 2026-03-31 | Pablo Flores |
| 37 | 1.2.2.3 | Diseñar arquitectura general del experimento | 2.88d | 2026-04-02 | 2026-04-07 | 36 | start no later than 2026-04-02 | Pablo Flores |
| 38 | 1.2.2.4 | Identificar y seleccionar datasets HDL / QA | 1.88d | 2026-04-02 | 2026-04-06 | 36 | start no later than 2026-04-02 | Pablo Flores; MacBook M1 2020 |
| 39 | 1.2.2.5 | Planificar pipeline de entrenamiento y evaluación | 1.88d | 2026-04-07 | 2026-04-09 | 37 | start no later than 2026-04-07 | Pablo Flores; MacBook M1 2020 |
| 40 | 1.2.2.6 | Definir métricas y criterios de éxito del modelo | 0.88d | 2026-04-07 | 2026-04-08 | 37 | start no later than 2026-04-07 | Pablo Flores; MacBook M1 2020 |
| 41 | 1.2.2.7 | Documentar y aprobar diseño metodológico | 1.88d | 2026-04-09 | 2026-04-13 | 39, 40 | start no later than 2026-04-09 | Pablo Flores |
| 42 | 1.3 | **EJECUCIÓN** | 98d | 2026-04-13 | 2026-08-27 | 41 |  |  |
| 43 | 1.3.1 | **Marco Teórico** | 21d | 2026-04-13 | 2026-05-12 |  |  |  |
| 44 | 1.3.1.1 | Rev. bibliográfica: LLMs y arquitecturas Transformer | 2.88d | 2026-04-13 | 2026-04-16 | 41 | start no later than 2026-04-13 | Pablo Flores; MacBook M1 2020 |
| 45 | 1.3.1.2 | Rev. bibliográfica: LoRA y métodos PEFT | 3.88d | 2026-04-16 | 2026-04-22 | 44 | start no later than 2026-04-16 | Pablo Flores |
| 46 | 1.3.1.3 | Rev. bibliográfica: HDL — VHDL / Verilog | 2.88d | 2026-04-16 | 2026-04-21 | 44 | start no later than 2026-04-16 | Pablo Flores |
| 47 | 1.3.1.4 | Rev. bibliográfica: QA en diseño digital y EDA | 2.88d | 2026-04-21 | 2026-04-24 | 46 | start no later than 2026-04-21 | Pablo Flores; MacBook M1 2020 |
| 48 | 1.3.1.5 | Redactar sección — Fundamentos teóricos | 3.88d | 2026-04-24 | 2026-04-30 | 45, 47 | start no later than 2026-04-24 | Pablo Flores; MacBook M1 2020 |
| 49 | 1.3.1.6 | Redactar sección — LoRA aplicado a generación HDL | 3.88d | 2026-04-30 | 2026-05-06 | 48 | start no later than 2026-04-30 | Pablo Flores; MacBook M1 2020 |
| 50 | 1.3.1.7 | Redactar sección — Estado del arte | 2.88d | 2026-04-30 | 2026-05-05 | 48 | start no later than 2026-04-30 | Pablo Flores; MacBook M1 2020 |
| 51 | 1.3.1.8 | Revisión del marco teórico con asesor | 1.88d | 2026-05-06 | 2026-05-08 | 49, 50 | start no later than 2026-05-06 | Pablo Flores |
| 52 | 1.3.1.9 | Corrección y ajuste del marco teórico | 1.88d | 2026-05-08 | 2026-05-12 | 51 | start no later than 2026-05-08 | Pablo Flores |
| 53 | 1.3.2 | **Preprocesamiento de Datos** | 18d | 2026-04-13 | 2026-05-07 |  |  |  |
| 54 | 1.3.2.1 | Catalogar datasets HDL / QA disponibles | 1.88d | 2026-04-13 | 2026-04-15 | 38 | start no later than 2026-04-13 | Pablo Flores; MacBook M1 2020 |
| 55 | 1.3.2.2 | Descargar y verificar integridad de datasets | 0.88d | 2026-04-15 | 2026-04-16 | 54 | start no later than 2026-04-15 | Pablo Flores; MacBook M1 2020 |
| 56 | 1.3.2.3 | Análisis exploratorio de datos (EDA) | 1.88d | 2026-04-16 | 2026-04-20 | 55 | start no later than 2026-04-16 | Pablo Flores; MacBook M1 2020 |
| 57 | 1.3.2.4 | Limpieza y depuración de datos | 3.88d | 2026-04-20 | 2026-04-24 | 56 | start no later than 2026-04-20 | Pablo Flores |
| 58 | 1.3.2.5 | Tokenización y formateo para fine-tuning LLM | 2.88d | 2026-04-24 | 2026-04-29 | 57 | start no later than 2026-04-24 | Pablo Flores; MacBook M1 2020 |
| 59 | 1.3.2.6 | Transformación y normalización de datos | 2.88d | 2026-04-29 | 2026-05-04 | 58 | start no later than 2026-04-29 | Pablo Flores; MacBook M1 2020 |
| 60 | 1.3.2.7 | Validación de calidad e integridad del dataset | 1.88d | 2026-05-04 | 2026-05-06 | 59 | start no later than 2026-05-04 | Pablo Flores; MacBook M1 2020 |
| 61 | 1.3.2.8 | Documentar pipeline de preprocesamiento | 0.88d | 2026-05-06 | 2026-05-07 | 60 | start no later than 2026-05-06 | Pablo Flores |

| ID | WBS | Task | Duration | Start | Finish | Predecessors | Constraint | Resources |
| --- | --- | --- | --- | --- | --- | --- | --- | --- |
| 62 | 1.3.3 | **Entrenamiento LoRA** | 30d | 2026-05-12 | 2026-06-23 |  |  |  |
| 63 | 1.3.3.1 | Configurar entorno Python / HuggingFace en MacBook | 1.88d | 2026-05-12 | 2026-05-14 | 52, 61 | start no later than 2026-05-12 | Pablo Flores; MacBook M1 2020 |
| 64 | 1.3.3.2 | Instalar y verificar librerías PEFT / LoRA | 0.88d | 2026-05-14 | 2026-05-15 | 63 | start no later than 2026-05-14 | Pablo Flores; MacBook M1 2020 |
| 65 | 1.3.3.3 | Seleccionar y cargar modelo base LLM | 0.88d | 2026-05-15 | 2026-05-18 | 64 | start no later than 2026-05-15 | Pablo Flores; MacBook M1 2020 |
| 66 | 1.3.3.4 | Implementar cargador de datos HDL personalizado | 2.88d | 2026-05-18 | 2026-05-21 | 65 | start no later than 2026-05-18 | Pablo Flores; MacBook M1 2020 |
| 67 | 1.3.3.5 | Configurar parámetros LoRA (r, alpha, dropout) | 1.88d | 2026-05-21 | 2026-05-25 | 66 | start no later than 2026-05-21 | Pablo Flores; MacBook M1 2020 |
| 68 | 1.3.3.6 | Ejecutar entrenamiento piloto (sanity check) | 1.88d | 2026-05-25 | 2026-05-27 | 67 | start no later than 2026-05-25 | Pablo Flores; MacBook M1 2020 |
| 69 | 1.3.3.7 | Analizar métricas de pérdida y accuracy del piloto | 1.88d | 2026-05-27 | 2026-05-29 | 68 | start no later than 2026-05-27 | Pablo Flores; MacBook M1 2020 |
| 70 | 1.3.3.8 | Ajustar hiperparámetros — iteración 1 | 2.88d | 2026-05-29 | 2026-06-03 | 69 | start no later than 2026-05-29 | Pablo Flores |
| 71 | 1.3.3.9 | Ejecutar entrenamiento optimizado iteración 1 | 3.88d | 2026-06-03 | 2026-06-09 | 70 | start no later than 2026-06-03 | Pablo Flores; MacBook M1 2020 |
| 72 | 1.3.3.10 | Ajustar hiperparámetros — iteración 2 | 2.88d | 2026-06-09 | 2026-06-12 | 71 | start no later than 2026-06-09 | Pablo Flores |
| 73 | 1.3.3.11 | Ejecutar entrenamiento final (modelo definitivo) | 3.88d | 2026-06-12 | 2026-06-18 | 72 | start no later than 2026-06-12 | Pablo Flores; MacBook M1 2020 |
| 74 | 1.3.3.12 | Guardar, versionar y respaldar modelo entrenado | 0.88d | 2026-06-18 | 2026-06-19 | 73 | start no later than 2026-06-18 | Pablo Flores; MacBook M1 2020 |
| 75 | 1.3.3.13 | Documentar proceso de entrenamiento completo | 1.88d | 2026-06-19 | 2026-06-23 | 74 | start no later than 2026-06-19 | Pablo Flores; MacBook M1 2020 |
| 76 | 1.3.4 | **Evaluación Benchmark** | 14d | 2026-06-19 | 2026-07-09 |  |  |  |
| 77 | 1.3.4.1 | Revisar benchmarks existentes para LLM / HDL | 1.88d | 2026-06-19 | 2026-06-23 | 74 | start no later than 2026-06-19 | Pablo Flores; MacBook M1 2020 |
| 78 | 1.3.4.2 | Definir métricas: BLEU, exactitud sintáctica, PASS@k | 0.88d | 2026-06-23 | 2026-06-24 | 77 | start no later than 2026-06-23 | Pablo Flores |
| 79 | 1.3.4.3 | Implementar scripts de evaluación automatizada | 2.88d | 2026-06-24 | 2026-06-29 | 78 | start no later than 2026-06-24 | Pablo Flores; MacBook M1 2020 |
| 80 | 1.3.4.4 | Ejecutar benchmark — modelo LoRA fine-tuned | 2.88d | 2026-06-29 | 2026-07-02 | 79 | start no later than 2026-06-29 | Pablo Flores; MacBook M1 2020 |
| 81 | 1.3.4.5 | Ejecutar benchmark — modelo base (baseline) | 1.88d | 2026-06-29 | 2026-07-01 | 79 | start no later than 2026-06-29 | Pablo Flores; MacBook M1 2020 |
| 82 | 1.3.4.6 | Comparar y analizar: LoRA vs baseline | 2.88d | 2026-07-02 | 2026-07-07 | 80, 81 | start no later than 2026-07-02 | Pablo Flores; MacBook M1 2020 |
| 83 | 1.3.4.7 | Documentar resultados del benchmark | 1.88d | 2026-07-07 | 2026-07-09 | 82 | start no later than 2026-07-07 | Pablo Flores; MacBook M1 2020 |
| 84 | 1.3.5 | **Análisis de Resultados** | 12d | 2026-07-09 | 2026-07-27 |  |  |  |
| 85 | 1.3.5.1 | Compilar y consolidar todas las métricas | 0.88d | 2026-07-09 | 2026-07-10 | 83, 75 | start no later than 2026-07-09 | Pablo Flores |
| 86 | 1.3.5.2 | Análisis estadístico descriptivo de resultados | 1.88d | 2026-07-10 | 2026-07-14 | 85 | start no later than 2026-07-10 | Pablo Flores |
| 87 | 1.3.5.3 | Visualizar resultados (gráficas y tablas) | 1.88d | 2026-07-14 | 2026-07-16 | 86 | start no later than 2026-07-14 | Pablo Flores; MacBook M1 2020 |
| 88 | 1.3.5.4 | Comparar con modelos del estado del arte | 2.88d | 2026-07-16 | 2026-07-21 | 87 | start no later than 2026-07-16 | Pablo Flores; MacBook M1 2020 |
| 89 | 1.3.5.5 | Identificar fortalezas, limitaciones y trabajo futuro | 1.88d | 2026-07-21 | 2026-07-23 | 88 | start no later than 2026-07-21 | Pablo Flores |
| 90 | 1.3.5.6 | Redactar análisis e interpretación de resultados | 1.88d | 2026-07-23 | 2026-07-27 | 89 | start no later than 2026-07-23 | Pablo Flores; MacBook M1 2020 |

| ID | WBS | Task | Duration | Start | Finish | Predecessors | Constraint | Resources |
| --- | --- | --- | --- | --- | --- | --- | --- | --- |
| 91 | 1.3.6 | **Redacción del Informe Final** | 23d | 2026-07-27 | 2026-08-27 |  |  |  |
| 92 | 1.3.6.1 | Definir estructura y capítulos del informe | 0.88d | 2026-07-27 | 2026-07-28 | 90 | start no later than 2026-07-27 | Pablo Flores |
| 93 | 1.3.6.2 | Redactar cap. 1 — Introducción | 1.88d | 2026-07-28 | 2026-07-30 | 92 | start no later than 2026-07-28 | Pablo Flores; MacBook M1 2020 |
| 94 | 1.3.6.3 | Integrar cap. 2 — Marco teórico (ajustar) | 1.88d | 2026-07-28 | 2026-07-30 | 92 | start no later than 2026-07-28 | Pablo Flores |
| 95 | 1.3.6.4 | Redactar cap. 3 — Metodología | 2.88d | 2026-07-28 | 2026-07-31 | 92 | start no later than 2026-07-28 | Pablo Flores; MacBook M1 2020 |
| 96 | 1.3.6.5 | Redactar cap. 4 — Resultados y análisis | 2.88d | 2026-07-28 | 2026-07-31 | 92 | start no later than 2026-07-28 | Pablo Flores; MacBook M1 2020 |
| 97 | 1.3.6.6 | Redactar cap. 5 — Conclusiones y recomendaciones | 1.88d | 2026-07-31 | 2026-08-04 | 93, 94, 95, 96 | start no later than 2026-07-31 | Pablo Flores; MacBook M1 2020 |
| 98 | 1.3.6.7 | Elaborar referencias bibliográficas (APA / IEEE) | 0.88d | 2026-08-04 | 2026-08-05 | 97 | start no later than 2026-08-04 | Pablo Flores |
| 99 | 1.3.6.8 | Revisar formato y estilo según normativo UNIS | 1.88d | 2026-08-05 | 2026-08-07 | 98 | start no later than 2026-08-05 | Pablo Flores; MacBook M1 2020 |
| 100 | 1.3.6.9 | Primera revisión con asesor (espera retroalim.) | 2.88d | 2026-08-07 | 2026-08-12 | 99 | start no later than 2026-08-07 | Pablo Flores |
| 101 | 1.3.6.10 | Aplicar primera ronda de correcciones | 2.88d | 2026-08-12 | 2026-08-17 | 100 | start no later than 2026-08-12 | Pablo Flores |
| 102 | 1.3.6.11 | Segunda revisión con asesor (espera retroalim.) | 4.88d | 2026-08-17 | 2026-08-24 | 101 | start no later than 2026-08-17 | Pablo Flores |
| 103 | 1.3.6.12 | Aplicar segunda ronda de correcciones | 2.88d | 2026-08-24 | 2026-08-27 | 102 | start no later than 2026-08-24 | Pablo Flores |
| 104 | 1.4 | **MONITOREO Y CONTROL** | 11d | 2026-02-27 | 2026-03-16 |  |  |  |
| 105 | 1.4.1 | **Seguimiento** | 11d | 2026-02-27 | 2026-03-16 |  |  |  |
| 106 | 1.4.1.1 | Planificar agenda y protocolo de reuniones | 0.88d | 2026-02-27 | 2026-03-02 | 22 | start no later than 2026-02-27 | Pablo Flores |
| 107 | 1.4.1.2 | Conducir reuniones semanales con asesor | 9.88d | 2026-03-02 | 2026-03-16 | 106 | start no later than 2026-03-02 | Pablo Flores |
| 108 | 1.4.1.3 | Elaborar reportes de avance mensuales | 4.88d | 2026-03-02 | 2026-03-09 | 106 | start no later than 2026-03-02 | Pablo Flores |
| 109 | 1.4.1.4 | Actualizar y monitorear cronograma del proyecto | 1.88d | 2026-03-02 | 2026-03-04 | 106 | start no later than 2026-03-02 | Pablo Flores |
| 110 | 1.4.2 | **Control de Cambios** | 9d | 2026-03-02 | 2026-03-13 |  |  |  |
| 111 | 1.4.2.1 | Registrar solicitudes de cambio formales | 1.88d | 2026-03-02 | 2026-03-04 | 106 | start no later than 2026-03-02 | Pablo Flores |
| 112 | 1.4.2.2 | Evaluar y aprobar cambios con asesor | 1.88d | 2026-03-04 | 2026-03-06 | 111 | start no later than 2026-03-04 | Pablo Flores |
| 113 | 1.4.2.3 | Implementar cambios aprobados | 2.88d | 2026-03-06 | 2026-03-11 | 112 | start no later than 2026-03-06 | Pablo Flores; MacBook M1 2020 |
| 114 | 1.4.2.4 | Documentar lecciones aprendidas | 1.88d | 2026-03-11 | 2026-03-13 | 113 | start no later than 2026-03-11 | Pablo Flores |

| ID | WBS | Task | Type | Duration | Start | Finish | Predecessors | Constraint | Resources |
| --- | --- | --- | --- | --- | --- | --- | --- | --- | --- |
| 115 | 1.5 | **CIERRE** |  | 21.5d | 2026-08-27 | 2026-09-25 | 103 |  |  |
| 116 | 1.5.1 | **Correcciones Finales** |  | 10d | 2026-08-27 | 2026-09-10 |  |  |  |
| 117 | 1.5.1.1 | Recibir retroalimentación final del asesor |  | 0.88d | 2026-08-27 | 2026-08-28 | 103 | start no later than 2026-08-27 | Pablo Flores |
| 118 | 1.5.1.2 | Aplicar correcciones finales al documento |  | 2.88d | 2026-08-28 | 2026-09-02 | 117 | start no later than 2026-08-28 | Pablo Flores |
| 119 | 1.5.1.3 | Revisión de ortografía, gramática y estilo |  | 0.88d | 2026-09-02 | 2026-09-03 | 118 | start no later than 2026-09-02 | Pablo Flores |
| 120 | 1.5.1.4 | Formatear documento final según normativo UNIS |  | 1.88d | 2026-09-03 | 2026-09-07 | 119 | start no later than 2026-09-03 | Pablo Flores |
| 121 | 1.5.1.5 | Aprobación final y firma del asesor |  | 2.88d | 2026-09-07 | 2026-09-10 | 120 | start no later than 2026-09-07 | Pablo Flores |
| 122 | 1.5.2 | **Defensa Pública** |  | 8d | 2026-09-10 | 2026-09-22 |  |  |  |
| 123 | 1.5.2.1 | Preparar presentación PowerPoint para defensa |  | 1.88d | 2026-09-10 | 2026-09-14 | 121 | start no later than 2026-09-10 | Pablo Flores; MacBook M1 2020 |
| 124 | 1.5.2.2 | Elaborar material de apoyo y demo técnico |  | 0.88d | 2026-09-14 | 2026-09-15 | 123 | start no later than 2026-09-14 | Pablo Flores; MacBook M1 2020 |
| 125 | 1.5.2.3 | Realizar ensayos de presentación (mínimo 3) |  | 0.88d | 2026-09-15 | 2026-09-16 | 124 | start no later than 2026-09-15 | Pablo Flores |
| 126 | 1.5.2.4 | Defensa oral ante el jurado evaluador |  | 0.88d | 2026-09-16 | 2026-09-17 | 125 | start no later than 2026-09-16 | Pablo Flores |
| 127 | 1.5.2.5 | Período de espera — resolución y nota del jurado |  | 2.88d | 2026-09-17 | 2026-09-22 | 126 | start no later than 2026-09-17 | Pablo Flores |
| 128 | 1.5.3 | **Entrega y Cierre** |  | 3.5d | 2026-09-22 | 2026-09-25 |  |  |  |
| 129 | 1.5.3.1 | Aplicar correcciones indicadas por el jurado |  | 1.88d | 2026-09-22 | 2026-09-24 | 127 | start no later than 2026-09-22 | Pablo Flores |
| 130 | 1.5.3.2 | Imprimir, empastar y preparar copias finales |  | 0.5d | 2026-09-24 | 2026-09-24 | 129 | start no later than 2026-09-24 | Pablo Flores |
| 131 | 1.5.3.3 | Entrega formal a biblioteca y facultad |  | 0.38d | 2026-09-25 | 2026-09-25 | 130 |  | Pablo Flores |
| 132 | 1.5.3.4 | Cierre administrativo del proyecto |  | 0.5d | 2026-09-25 | 2026-09-25 | 131 | start no later than 2026-09-25 | Pablo Flores |
| 133 | 1.5.3.5 | HITO — Proyecto de Graduación Completado | milestone | 0d | 2026-09-25 | 2026-09-25 | 132 |  |  |
