# Proyecto de Graduación LoRA-HDL-QA

Schedule from MS Project XML, 2025-01-15 to 2025-09-08.
Tesis de Graduación — UNIS Guatemala
UNIS — Universidad del Istmo

## Calendars

- Calendario Guatemala 2025: Mon-Fri 08:00-12:00, 13:00-17:00; Sat-Sun off. Exceptions (off unless hours are given): 2025-04-14 (Lunes Santo), 2025-04-15 (Martes Santo), 2025-04-16 (Miércoles Santo), 2025-04-17 (Jueves Santo), 2025-04-18 (Viernes Santo), 2025-04-19 (Sábado de Gloria), 2025-05-01 (Día del Trabajo), 2025-06-30 (Día del Ejército), 2025-08-15 (Asunción de la Virgen).

## Resources

| Resource | Unit | Rate |
| --- | --- | --- |
| Pablo Flores |  | 80 |
| MacBook M1 2020 | unidad |  |

## Schedule

| ID | WBS | Task | Duration | Start | Finish | Predecessors | Total slack | Free slack | Resources | Work |
| --- | --- | --- | --- | --- | --- | --- | --- | --- | --- | --- |
| 1 | 1 | **Proyecto de Graduación LoRA-HDL-QA** | 0d | 2025-01-15 | 2025-09-08 |  | 0d |  |  |  |
| 2 | 1.1 | **INICIO** | 0d | 2025-01-15 | 2025-02-11 |  | 0d |  |  |  |
| 3 | 1.1.1 | Inscripción del Tema | 0d | 2025-01-15 | 2025-01-28 |  | 0d |  |  |  |
| 4 | 1.1.2 | Asignación de Asesor | 0d | 2025-01-16 | 2025-01-30 |  | 0.65d |  |  |  |
| 5 | 1.1.3 | Plan del Proyecto | 0d | 2025-01-30 | 2025-02-11 |  | 0d |  |  |  |
| 6 | 1.2 | **PLANIFICACIÓN** | 0d | 2025-02-11 | 2025-03-26 |  | 0d |  |  |  |
| 7 | 1.2.1 | Anteproyecto | 0d | 2025-02-11 | 2025-03-11 |  | 0d |  |  |  |
| 8 | 1.2.2 | Diseño Metodológico | 0d | 2025-03-11 | 2025-03-26 |  | 0d |  |  |  |
| 9 | 1.3 | **EJECUCIÓN** | 0d | 2025-03-19 | 2025-08-08 |  | 0d |  |  |  |
| 10 | 1.3.1 | Marco Teórico | 0d | 2025-03-26 | 2025-05-02 |  | 0d |  |  |  |
| 11 | 1.3.2 | Preprocesamiento de Datos | 0d | 2025-03-19 | 2025-04-21 |  | 0.8d |  |  |  |
| 12 | 1.3.3 | Entrenamiento LoRA | 0d | 2025-05-02 | 2025-06-13 |  | 0d |  |  |  |
| 13 | 1.3.4 | Evaluación Benchmark | 0d | 2025-06-11 | 2025-07-02 |  | 0d |  |  |  |
| 14 | 1.3.5 | Análisis de Resultados | 0d | 2025-07-02 | 2025-07-18 |  | 0d |  |  |  |
| 15 | 1.3.6 | Redacción del Informe Final | 0d | 2025-07-18 | 2025-08-08 |  | 0d |  |  |  |
| 16 | 1.4 | **MONITOREO Y CONTROL** | 0d | 2025-02-11 | 2025-02-26 |  | 0d |  |  |  |
| 17 | 1.4.1 | Seguimiento | 0d | 2025-02-11 | 2025-02-26 |  | 12.95d |  |  |  |
| 18 | 1.4.2 | Control de Cambios | 0d | 2025-02-12 | 2025-02-25 |  | 13.05d |  |  |  |
| 19 | 1.5 | **CIERRE** | 0d | 2025-08-08 | 2025-09-08 |  | 0d |  |  |  |
| 20 | 1.5.1 | Correcciones Finales | 0d | 2025-08-08 | 2025-08-22 |  | 0d |  |  |  |
| 21 | 1.5.2 | Defensa Pública | 0d | 2025-08-22 | 2025-09-02 |  | 0d |  |  |  |
| 22 | 1.5.3 | **Entrega y Cierre Formal** | 0d | 2025-09-02 | 2025-09-08 |  | 0d |  |  |  |
| 23 | 1.1.1.1 | Revisar normativo y reglamento de graduación | 1d | 2025-01-15 | 2025-01-15 |  | 0d |  | Pablo Flores | 8h |
| 24 | 1.1.1.2 | Definir y delimitar el tema de investigación | 2d | 2025-01-16 | 2025-01-17 | 23 | 0d |  | Pablo Flores | 16h |
| 25 | 1.1.1.3 | Preparar formularios y documentación de inscripción | 1d | 2025-01-20 | 2025-01-20 | 24 | 0d |  | Pablo Flores | 8h |
| 26 | 1.1.1.4 | Presentar solicitud formal ante la facultad | 0.5d | 2025-01-21 | 2025-01-21 | 25 | 0d |  | Pablo Flores | 4h |
| 27 | 1.1.1.5 | Período de espera — resolución institucional | 5d | 2025-01-21 | 2025-01-28 | 26 | 0d |  | Pablo Flores | 40h |
| 28 | 1.1.1.6 | Recibir y archivar aprobación formal del tema | 0.5d | 2025-01-28 | 2025-01-28 | 27 | 0d |  | Pablo Flores | 4h |
| 29 | 1.1.2.1 | Identificar y evaluar candidatos a asesor | 1d | 2025-01-16 | 2025-01-16 | 23 | 0.65d | 0d | Pablo Flores | 8h |
| 30 | 1.1.2.2 | Contactar y reunirse con candidatos | 1d | 2025-01-17 | 2025-01-17 | 29 | 0.65d | 0d | Pablo Flores | 8h |
| 31 | 1.1.2.3 | Seleccionar asesor definitivo | 0.5d | 2025-01-20 | 2025-01-20 | 30 | 0.65d |  | Pablo Flores | 4h |
| 32 | 1.1.2.4 | Formalizar carta de asignación del asesor | 0.5d | 2025-01-29 | 2025-01-29 | 28, 31 | 0d |  | Pablo Flores | 4h |
| 33 | 1.1.2.5 | Primera reunión de trabajo con asesor | 1d | 2025-01-29 | 2025-01-30 | 32 | 0d |  | Pablo Flores | 8h |
| 34 | 1.1.3.1 | Definir alcance, supuestos y restricciones | 2d | 2025-01-30 | 2025-02-03 | 33 | 0d |  | Pablo Flores | 16h |
| 35 | 1.1.3.2 | Elaborar EDT (WBS) del proyecto | 2d | 2025-02-03 | 2025-02-05 | 34 | 0d |  | Pablo Flores; MacBook M1 2020 [1 unidad] | 16h |
| 36 | 1.1.3.3 | Elaborar cronograma y línea base de tiempo | 2d | 2025-02-05 | 2025-02-07 | 35 | 0d |  | Pablo Flores; MacBook M1 2020 [1 unidad] | 16h |
| 37 | 1.1.3.4 | Identificar y evaluar riesgos del proyecto | 1d | 2025-02-05 | 2025-02-06 | 35 | 0.1d |  | Pablo Flores | 8h |
| 38 | 1.1.3.5 | Elaborar plan de comunicación y seguimiento | 1d | 2025-02-05 | 2025-02-06 | 35 | 0.1d |  | Pablo Flores | 8h |
| 39 | 1.1.3.6 | Revisión y aprobación formal del plan con asesor | 2d | 2025-02-07 | 2025-02-11 | 36, 37, 38 | 0d |  | Pablo Flores | 16h |
| 40 | 1.2.1.1 | Revisión de literatura sobre el problema | 3d | 2025-02-11 | 2025-02-14 | 39 | 0d |  | Pablo Flores; MacBook M1 2020 [1 unidad] | 24h |
| 41 | 1.2.1.2 | Redactar planteamiento del problema | 3d | 2025-02-14 | 2025-02-19 | 40 | 0d |  | Pablo Flores | 24h |
| 42 | 1.2.1.3 | Definir objetivos general y específicos | 2d | 2025-02-19 | 2025-02-21 | 41 | 0d |  | Pablo Flores | 16h |
| 43 | 1.2.1.4 | Plantear hipótesis de investigación | 1d | 2025-02-21 | 2025-02-24 | 42 | 0.1d |  | Pablo Flores | 8h |
| 44 | 1.2.1.5 | Escribir justificación del proyecto | 2d | 2025-02-21 | 2025-02-25 | 42 | 0d |  | Pablo Flores | 16h |
| 45 | 1.2.1.6 | Redactar documento completo de anteproyecto | 3d | 2025-02-25 | 2025-02-28 | 43, 44 | 0d |  | Pablo Flores; MacBook M1 2020 [1 unidad] | 24h |
| 46 | 1.2.1.7 | Revisión del anteproyecto con asesor | 2d | 2025-02-28 | 2025-03-04 | 45 | 0d |  | Pablo Flores | 16h |
| 47 | 1.2.1.8 | Presentar anteproyecto ante comité evaluador | 1d | 2025-03-04 | 2025-03-05 | 46 | 0d |  | Pablo Flores | 8h |
| 48 | 1.2.1.9 | Período de espera — aprobación del comité | 4d | 2025-03-05 | 2025-03-11 | 47 | 0d |  | Pablo Flores | 32h |
| 49 | 1.2.2.1 | Revisar y comparar metodologías de investigación | 2d | 2025-03-11 | 2025-03-13 | 48 | 0d |  | Pablo Flores; MacBook M1 2020 [1 unidad] | 16h |
| 50 | 1.2.2.2 | Seleccionar y justificar metodología adoptada | 2d | 2025-03-13 | 2025-03-17 | 49 | 0d |  | Pablo Flores | 16h |
| 51 | 1.2.2.3 | Diseñar arquitectura general del experimento | 3d | 2025-03-17 | 2025-03-20 | 50 | 0d |  | Pablo Flores; MacBook M1 2020 [1 unidad] | 24h |
| 52 | 1.2.2.4 | Identificar fuentes de datos y datasets HDL/QA | 2d | 2025-03-17 | 2025-03-19 | 50 | 0.8d | 0d | Pablo Flores; MacBook M1 2020 [1 unidad] | 16h |
| 53 | 1.2.2.5 | Planificar pipeline de entrenamiento y evaluación | 2d | 2025-03-20 | 2025-03-24 | 51 | 0d |  | Pablo Flores; MacBook M1 2020 [1 unidad] | 16h |
| 54 | 1.2.2.6 | Definir métricas y criterios de éxito del modelo | 1d | 2025-03-20 | 2025-03-21 | 51 | 0.1d |  | Pablo Flores | 8h |
| 55 | 1.2.2.7 | Documentar y aprobar diseño metodológico | 2d | 2025-03-24 | 2025-03-26 | 53, 54 | 0d |  | Pablo Flores | 16h |
| 56 | 1.3.1.1 | Rev. bibliográfica: LLMs y arquitecturas Transformer | 3d | 2025-03-26 | 2025-03-31 | 55 | 0d |  | Pablo Flores; MacBook M1 2020 [1 unidad] | 24h |
| 57 | 1.3.1.2 | Rev. bibliográfica: LoRA y métodos PEFT | 4d | 2025-03-31 | 2025-04-04 | 56 | 0.2d |  | Pablo Flores; MacBook M1 2020 [1 unidad] | 32h |
| 58 | 1.3.1.3 | Rev. bibliográfica: HDL — VHDL / Verilog | 3d | 2025-03-31 | 2025-04-03 | 56 | 0d |  | Pablo Flores; MacBook M1 2020 [1 unidad] | 24h |
| 59 | 1.3.1.4 | Rev. bibliográfica: QA en diseño digital y EDA | 3d | 2025-04-03 | 2025-04-08 | 58 | 0d |  | Pablo Flores; MacBook M1 2020 [1 unidad] | 24h |
| 60 | 1.3.1.5 | Redactar sección — Fundamentos teóricos | 4d | 2025-04-08 | 2025-04-21 | 57, 59 | 0d |  | Pablo Flores | 32h |
| 61 | 1.3.1.6 | Redactar sección — LoRA aplicado a generación HDL | 4d | 2025-04-21 | 2025-04-25 | 60 | 0d |  | Pablo Flores | 32h |
| 62 | 1.3.1.7 | Redactar sección — Estado del arte y trabajos relacionados | 3d | 2025-04-21 | 2025-04-24 | 60 | 0.1d |  | Pablo Flores | 24h |
| 63 | 1.3.1.8 | Revisión del marco teórico con asesor | 2d | 2025-04-25 | 2025-04-29 | 61, 62 | 0d |  | Pablo Flores | 16h |
| 64 | 1.3.1.9 | Corrección y ajuste del marco teórico | 2d | 2025-04-29 | 2025-05-02 | 63 | 0d |  | Pablo Flores | 16h |
| 65 | 1.3.2.1 | Investigar y catalogar datasets disponibles (HDL) | 2d | 2025-03-19 | 2025-03-21 | 52 | 0.8d | 0d | Pablo Flores; MacBook M1 2020 [1 unidad] | 16h |
| 66 | 1.3.2.2 | Descargar y verificar integridad de datasets | 1d | 2025-03-21 | 2025-03-24 | 65 | 0.8d | 0d | Pablo Flores; MacBook M1 2020 [1 unidad] | 8h |
| 67 | 1.3.2.3 | Análisis exploratorio de datos (EDA) | 2d | 2025-03-24 | 2025-03-26 | 66 | 0.8d | 0d | Pablo Flores; MacBook M1 2020 [1 unidad] | 16h |
| 68 | 1.3.2.4 | Limpieza y depuración de datos | 4d | 2025-03-26 | 2025-04-01 | 67 | 0.8d | 0d | Pablo Flores; MacBook M1 2020 [1 unidad] | 32h |
| 69 | 1.3.2.5 | Tokenización y formateo para LLM fine-tuning | 3d | 2025-04-01 | 2025-04-04 | 68 | 0.8d | 0d | Pablo Flores; MacBook M1 2020 [1 unidad] | 24h |
| 70 | 1.3.2.6 | Transformación y normalización de datos | 3d | 2025-04-04 | 2025-04-09 | 69 | 0.8d | 0d | Pablo Flores; MacBook M1 2020 [1 unidad] | 24h |

| ID | WBS | Task | Type | Duration | Start | Finish | Predecessors | Total slack | Free slack | Resources | Work |
| --- | --- | --- | --- | --- | --- | --- | --- | --- | --- | --- | --- |
| 71 | 1.3.2.7 | Validación de integridad y calidad del dataset |  | 2d | 2025-04-09 | 2025-04-11 | 70 | 0.8d | 0d | Pablo Flores; MacBook M1 2020 [1 unidad] | 16h |
| 72 | 1.3.2.8 | Documentar pipeline de preprocesamiento |  | 1d | 2025-04-11 | 2025-04-21 | 71 | 0.8d |  | Pablo Flores | 8h |
| 73 | 1.3.3.1 | Configurar entorno Python / HuggingFace |  | 2d | 2025-05-02 | 2025-05-06 | 64, 72 | 0d |  | Pablo Flores; MacBook M1 2020 [1 unidad] | 16h |
| 74 | 1.3.3.2 | Instalar y verificar librerías PEFT / LoRA |  | 1d | 2025-05-06 | 2025-05-07 | 73 | 0d |  | Pablo Flores; MacBook M1 2020 [1 unidad] | 8h |
| 75 | 1.3.3.3 | Seleccionar y cargar modelo base LLM |  | 1d | 2025-05-07 | 2025-05-08 | 74 | 0d |  | Pablo Flores; MacBook M1 2020 [1 unidad] | 8h |
| 76 | 1.3.3.4 | Implementar cargador de datos HDL personalizado |  | 3d | 2025-05-08 | 2025-05-13 | 75 | 0d |  | Pablo Flores; MacBook M1 2020 [1 unidad] | 24h |
| 77 | 1.3.3.5 | Configurar parámetros LoRA (r, alpha, dropout) |  | 2d | 2025-05-13 | 2025-05-15 | 76 | 0d |  | Pablo Flores; MacBook M1 2020 [1 unidad] | 16h |
| 78 | 1.3.3.6 | Ejecutar entrenamiento piloto (sanity check) |  | 2d | 2025-05-15 | 2025-05-19 | 77 | 0d |  | Pablo Flores; MacBook M1 2020 [1 unidad] | 16h |
| 79 | 1.3.3.7 | Analizar métricas de pérdida y accuracy (piloto) |  | 2d | 2025-05-19 | 2025-05-21 | 78 | 0d |  | Pablo Flores | 16h |
| 80 | 1.3.3.8 | Ajustar hiperparámetros — iteración 1 |  | 3d | 2025-05-21 | 2025-05-26 | 79 | 0d |  | Pablo Flores; MacBook M1 2020 [1 unidad] | 24h |
| 81 | 1.3.3.9 | Ejecutar entrenamiento optimizado iteración 1 |  | 4d | 2025-05-26 | 2025-05-30 | 80 | 0d |  | Pablo Flores; MacBook M1 2020 [1 unidad] | 32h |
| 82 | 1.3.3.10 | Ajustar hiperparámetros — iteración 2 |  | 3d | 2025-05-30 | 2025-06-04 | 81 | 0d |  | Pablo Flores; MacBook M1 2020 [1 unidad] | 24h |
| 83 | 1.3.3.11 | Ejecutar entrenamiento final (modelo definitivo) |  | 4d | 2025-06-04 | 2025-06-10 | 82 | 0d |  | Pablo Flores; MacBook M1 2020 [1 unidad] | 32h |
| 84 | 1.3.3.12 | Guardar, versionar y respaldar modelo entrenado |  | 1d | 2025-06-10 | 2025-06-11 | 83 | 0d |  | Pablo Flores; MacBook M1 2020 [1 unidad] | 8h |
| 85 | 1.3.3.13 | Documentar proceso de entrenamiento completo |  | 2d | 2025-06-11 | 2025-06-13 | 84 | 1.2d |  | Pablo Flores | 16h |
| 86 | 1.3.4.1 | Revisar benchmarks existentes para LLM / HDL |  | 2d | 2025-06-11 | 2025-06-13 | 84 | 0d |  | Pablo Flores; MacBook M1 2020 [1 unidad] | 16h |
| 87 | 1.3.4.2 | Definir métricas: BLEU, exactitud sintáctica, PASS@k |  | 1d | 2025-06-13 | 2025-06-16 | 86 | 0d |  | Pablo Flores | 8h |
| 88 | 1.3.4.3 | Implementar scripts de evaluación automatizada |  | 3d | 2025-06-16 | 2025-06-19 | 87 | 0d |  | Pablo Flores; MacBook M1 2020 [1 unidad] | 24h |
| 89 | 1.3.4.4 | Ejecutar benchmark en modelo LoRA fine-tuned |  | 3d | 2025-06-19 | 2025-06-24 | 88 | 0d |  | Pablo Flores; MacBook M1 2020 [1 unidad] | 24h |
| 90 | 1.3.4.5 | Ejecutar benchmark en modelo base (baseline) |  | 2d | 2025-06-19 | 2025-06-23 | 88 | 0.1d |  | Pablo Flores; MacBook M1 2020 [1 unidad] | 16h |
| 91 | 1.3.4.6 | Comparar y analizar: LoRA vs baseline |  | 3d | 2025-06-24 | 2025-06-27 | 89, 90 | 0d |  | Pablo Flores | 24h |
| 92 | 1.3.4.7 | Documentar resultados del benchmark |  | 2d | 2025-06-27 | 2025-07-02 | 91 | 0d |  | Pablo Flores | 16h |
| 93 | 1.3.5.1 | Compilar y consolidar todas las métricas |  | 1d | 2025-07-02 | 2025-07-03 | 92, 85 | 0d |  | Pablo Flores | 8h |
| 94 | 1.3.5.2 | Análisis estadístico descriptivo de resultados |  | 2d | 2025-07-03 | 2025-07-07 | 93 | 0d |  | Pablo Flores; MacBook M1 2020 [1 unidad] | 16h |
| 95 | 1.3.5.3 | Visualizar resultados (gráficas y tablas) |  | 2d | 2025-07-07 | 2025-07-09 | 94 | 0d |  | Pablo Flores; MacBook M1 2020 [1 unidad] | 16h |
| 96 | 1.3.5.4 | Comparar con modelos del estado del arte |  | 3d | 2025-07-09 | 2025-07-14 | 95 | 0d |  | Pablo Flores | 24h |
| 97 | 1.3.5.5 | Identificar fortalezas, limitaciones y trabajo futuro |  | 2d | 2025-07-14 | 2025-07-16 | 96 | 0d |  | Pablo Flores | 16h |
| 98 | 1.3.5.6 | Redactar análisis e interpretación de resultados |  | 2d | 2025-07-16 | 2025-07-18 | 97 | 0d |  | Pablo Flores | 16h |
| 99 | 1.3.6.1 | Definir estructura y capítulos del informe |  | 1d | 2025-07-18 | 2025-07-21 | 98 | 0d |  | Pablo Flores | 8h |
| 100 | 1.3.6.2 | Redactar cap. 1 — Introducción |  | 2d | 2025-07-21 | 2025-07-23 | 99 | 0.1d |  | Pablo Flores | 16h |
| 101 | 1.3.6.3 | Integrar cap. 2 — Marco teórico (ajustar) |  | 2d | 2025-07-21 | 2025-07-23 | 99 | 0.1d |  | Pablo Flores | 16h |
| 102 | 1.3.6.4 | Redactar cap. 3 — Metodología |  | 3d | 2025-07-21 | 2025-07-24 | 99 | 0d |  | Pablo Flores | 24h |
| 103 | 1.3.6.5 | Redactar cap. 4 — Resultados y análisis |  | 3d | 2025-07-21 | 2025-07-24 | 99 | 0d |  | Pablo Flores | 24h |
| 104 | 1.3.6.6 | Redactar cap. 5 — Conclusiones y recomendaciones |  | 2d | 2025-07-24 | 2025-07-28 | 100, 101, 102, 103 | 0d |  | Pablo Flores | 16h |
| 105 | 1.3.6.7 | Elaborar referencias bibliográficas (APA/IEEE) |  | 1d | 2025-07-28 | 2025-07-29 | 104 | 0d |  | Pablo Flores | 8h |
| 106 | 1.3.6.8 | Revisar formato y estilo según normativo UNIS |  | 2d | 2025-07-29 | 2025-07-31 | 105 | 0d |  | Pablo Flores; MacBook M1 2020 [1 unidad] | 16h |
| 107 | 1.3.6.9 | Revisión preliminar con asesor (espera feedback) |  | 3d | 2025-07-31 | 2025-08-05 | 106 | 0d |  | Pablo Flores | 24h |
| 108 | 1.3.6.10 | Aplicar primera ronda de correcciones del asesor |  | 3d | 2025-08-05 | 2025-08-08 | 107 | 0d |  | Pablo Flores | 24h |
| 109 | 1.4.1.1 | Planificar agenda de reuniones con asesor |  | 1d | 2025-02-11 | 2025-02-12 | 39 | 12.95d | 0d | Pablo Flores | 8h |
| 110 | 1.4.1.2 | Conducir reuniones periódicas con asesor |  | 10d | 2025-02-12 | 2025-02-26 | 109 | 12.95d |  | Pablo Flores | 80h |
| 111 | 1.4.1.3 | Elaborar reportes de avance mensuales |  | 5d | 2025-02-12 | 2025-02-19 | 109 | 13.45d |  | Pablo Flores | 40h |
| 112 | 1.4.1.4 | Actualizar y monitorear cronograma del proyecto |  | 2d | 2025-02-12 | 2025-02-14 | 109 | 13.75d |  | Pablo Flores; MacBook M1 2020 [1 unidad] | 16h |
| 113 | 1.4.2.1 | Registrar solicitudes de cambio formales |  | 2d | 2025-02-12 | 2025-02-14 | 109 | 13.05d | 0d | Pablo Flores | 16h |
| 114 | 1.4.2.2 | Evaluar y aprobar cambios con asesor |  | 2d | 2025-02-14 | 2025-02-18 | 113 | 13.05d | 0d | Pablo Flores | 16h |
| 115 | 1.4.2.3 | Implementar cambios aprobados en el proyecto |  | 3d | 2025-02-18 | 2025-02-21 | 114 | 13.05d | 0d | Pablo Flores; MacBook M1 2020 [1 unidad] | 24h |
| 116 | 1.4.2.4 | Documentar lecciones aprendidas |  | 2d | 2025-02-21 | 2025-02-25 | 115 | 13.05d |  | Pablo Flores | 16h |
| 117 | 1.5.1.1 | Recibir retroalimentación final del asesor |  | 1d | 2025-08-08 | 2025-08-11 | 108 | 0d |  | Pablo Flores | 8h |
| 118 | 1.5.1.2 | Aplicar correcciones finales al documento |  | 3d | 2025-08-11 | 2025-08-14 | 117 | 0d |  | Pablo Flores | 24h |
| 119 | 1.5.1.3 | Revisión de ortografía, gramática y estilo |  | 1d | 2025-08-14 | 2025-08-18 | 118 | 0d |  | Pablo Flores | 8h |
| 120 | 1.5.1.4 | Formatear documento final según normativo UNIS |  | 2d | 2025-08-18 | 2025-08-20 | 119 | 0d |  | Pablo Flores; MacBook M1 2020 [1 unidad] | 16h |
| 121 | 1.5.1.5 | Aprobación final y firma del asesor |  | 2d | 2025-08-20 | 2025-08-22 | 120 | 0d |  | Pablo Flores | 16h |
| 122 | 1.5.2.1 | Preparar presentación PowerPoint para defensa |  | 2d | 2025-08-22 | 2025-08-26 | 121 | 0d |  | Pablo Flores; MacBook M1 2020 [1 unidad] | 16h |
| 123 | 1.5.2.2 | Elaborar material de apoyo y demo técnico |  | 1d | 2025-08-26 | 2025-08-27 | 122 | 0d |  | Pablo Flores; MacBook M1 2020 [1 unidad] | 8h |
| 124 | 1.5.2.3 | Realizar ensayos de presentación (mínimo 3) |  | 1d | 2025-08-27 | 2025-08-28 | 123 | 0d |  | Pablo Flores | 8h |
| 125 | 1.5.2.4 | Defensa oral ante el jurado evaluador |  | 1d | 2025-08-28 | 2025-08-29 | 124 | 0d |  | Pablo Flores | 8h |
| 126 | 1.5.2.5 | Período de espera — resolución y nota del jurado |  | 2d | 2025-08-29 | 2025-09-02 | 125 | 0d |  | Pablo Flores | 16h |
| 127 | 1.5.3.1 | Aplicar correcciones indicadas por el jurado |  | 2d | 2025-09-02 | 2025-09-04 | 126 | 0d |  | Pablo Flores | 16h |
| 128 | 1.5.3.2 | Imprimir, empastar y preparar copias finales |  | 0.5d | 2025-09-04 | 2025-09-04 | 127 | 0d |  | Pablo Flores | 4h |
| 129 | 1.5.3.3 | Entrega formal a biblioteca y facultad |  | 0.5d | 2025-09-05 | 2025-09-05 | 128 | 0d |  | Pablo Flores | 4h |
| 130 | 1.5.3.4 | Cierre administrativo del proyecto |  | 0.5d | 2025-09-05 | 2025-09-05 | 129 | 0d |  | Pablo Flores | 4h |
| 131 | 1.5.3.5 | HITO: Proyecto de Graduación Completado | milestone | 0d | 2025-09-08 | 2025-09-08 | 130 | 0d |  |  |  |
