# Proyecto de Graduación LoRA-HDL-QA

Schedule from MS Project XML, 2026-02-02 to 2026-09-14.

## Calendars

- Pablo Flores: Mon-Fri 08:00-12:00, 13:00-17:00; Sat-Sun off.

## Resources

| Resource | Rate |
| --- | --- |
| Unassigned |  |
| Pablo Flores | 80 |
| MacBook M1 2020 |  |

## Schedule

| ID | WBS | Task | Duration | Start | Finish | Predecessors | Constraint | Resources |
| --- | --- | --- | --- | --- | --- | --- | --- | --- |
| 1 | 0 | **Proyecto de Graduación LoRA-HDL-QA** | 160.88d | 2026-02-02 | 2026-09-14 |  |  |  |
| 2 | 1.1 | **INICIO** | 18.5d | 2026-02-02 | 2026-02-26 |  |  |  |
| 3 | 1.1.1 | **Inscripción del Tema** | 9.75d | 2026-02-02 | 2026-02-13 |  |  |  |
| 4 | 1.1.1.1 | Revisar normativo y reglamento de graduación | 1d | 2026-02-02 | 2026-02-02 |  |  | Pablo Flores |
| 5 | 1.1.1.2 | Delimitar el tema de investigación | 2d | 2026-02-03 | 2026-02-04 | 4 |  | Pablo Flores |
| 6 | 1.1.1.3 | Preparar formularios y documentación | 1d | 2026-02-05 | 2026-02-05 | 5 |  | Pablo Flores |
| 7 | 1.1.1.4 | Presentar solicitud formal ante la facultad | 0.38d | 2026-02-06 | 2026-02-06 | 6 |  | Pablo Flores |
| 8 | 1.1.1.5 | Período de espera — resolución institucional | 4.88d | 2026-02-06 | 2026-02-13 | 7 | start no later than 2026-02-06 | Pablo Flores |
| 9 | 1.1.1.6 | Recibir aprobación formal del tema | 0.5d | 2026-02-13 | 2026-02-13 | 8 | start no later than 2026-02-13 | Pablo Flores |
| 10 | 1.1.2 | **Asignación de Asesor** | 10d | 2026-02-03 | 2026-02-16 |  |  |  |
| 11 | 1.1.2.1 | Identificar y evaluar candidatos a asesor | 1d | 2026-02-03 | 2026-02-03 | 4 |  | Pablo Flores |
| 12 | 1.1.2.2 | Contactar y reunirse con candidatos | 1d | 2026-02-04 | 2026-02-04 | 11 |  | Pablo Flores |
| 13 | 1.1.2.3 | Seleccionar asesor definitivo | 0.38d | 2026-02-05 | 2026-02-05 | 12 |  | Pablo Flores |
| 14 | 1.1.2.4 | Formalizar carta de asignación del asesor | 0.38d | 2026-02-13 | 2026-02-16 | 9, 13 |  | Pablo Flores |
| 15 | 1.1.2.5 | Primera reunión de trabajo con asesor | 0.88d | 2026-02-16 | 2026-02-16 | 14 | start no later than 2026-02-16 | Pablo Flores |
| 16 | 1.1.3 | **Plan del Proyecto** | 7.5d | 2026-02-17 | 2026-02-26 |  | start no later than 2026-02-17 |  |
| 17 | 1.1.3.1 | Definir alcance, supuestos y restricciones | 1.88d | 2026-02-17 | 2026-02-18 | 15 | start no later than 2026-02-17 | Pablo Flores |
| 18 | 1.1.3.2 | Elaborar EDT (WBS) del proyecto | 1.88d | 2026-02-18 | 2026-02-20 | 17 | start no later than 2026-02-19 | Pablo Flores |
| 19 | 1.1.3.3 | Elaborar cronograma y línea base de tiempo | 1.88d | 2026-02-20 | 2026-02-24 | 18 | start no later than 2026-02-23 | Pablo Flores |
| 20 | 1.1.3.4 | Identificar y evaluar riesgos | 0.88d | 2026-02-20 | 2026-02-23 | 18 | start no later than 2026-02-23 | Pablo Flores |
| 21 | 1.1.3.5 | Elaborar plan de comunicación y seguimiento | 0.88d | 2026-02-20 | 2026-02-23 | 18 | start no later than 2026-02-23 | Pablo Flores |
| 22 | 1.1.3.6 | Revisión y aprobación del plan con asesor | 1.88d | 2026-02-24 | 2026-02-26 | 19, 20, 21 | start no later than 2026-02-25 | Pablo Flores |
| 23 | 1.2 | **PLANIFICACIÓN** | 29.38d | 2026-02-26 | 2026-04-08 | 22 | start no later than 2026-02-27 |  |
| 24 | 1.2.1 | **Anteproyecto** | 19d | 2026-02-26 | 2026-03-25 |  | start no later than 2026-02-27 |  |
| 25 | 1.2.1.1 | Revisión de literatura sobre el problema | 2.88d | 2026-02-26 | 2026-03-03 | 22 | start no later than 2026-02-27 | Pablo Flores |
| 26 | 1.2.1.2 | Redactar planteamiento del problema | 2.88d | 2026-03-03 | 2026-03-06 | 25 | start no later than 2026-03-04 | Pablo Flores; MacBook M1 2020 |
| 27 | 1.2.1.3 | Definir objetivos general y específicos | 1.88d | 2026-03-06 | 2026-03-10 | 26 | start no later than 2026-03-09 | Pablo Flores |
| 28 | 1.2.1.4 | Plantear hipótesis de investigación | 0.88d | 2026-03-10 | 2026-03-10 | 27 | start no later than 2026-03-11 | Pablo Flores |
| 29 | 1.2.1.5 | Escribir justificación del proyecto | 1.88d | 2026-03-10 | 2026-03-11 | 27 | start no later than 2026-03-11 | Pablo Flores |
| 30 | 1.2.1.6 | Redactar documento completo de anteproyecto | 2.88d | 2026-03-12 | 2026-03-16 | 28, 29 | start no later than 2026-03-13 | Pablo Flores; MacBook M1 2020 |
| 31 | 1.2.1.7 | Revisión del anteproyecto con asesor | 1.88d | 2026-03-16 | 2026-03-18 | 30 | start no later than 2026-03-18 | Pablo Flores |
| 32 | 1.2.1.8 | Presentar anteproyecto ante comité evaluador | 0.88d | 2026-03-18 | 2026-03-19 | 31 | start no later than 2026-03-20 | Pablo Flores |
| 33 | 1.2.1.9 | Período de espera — aprobación del comité | 3.88d | 2026-03-19 | 2026-03-25 | 32 | start no later than 2026-03-23 | Pablo Flores |

| ID | WBS | Task | Duration | Start | Finish | Predecessors | Constraint | Resources |
| --- | --- | --- | --- | --- | --- | --- | --- | --- |
| 34 | 1.2.2 | **Diseño Metodológico** | 10.38d | 2026-03-25 | 2026-04-08 |  | start no later than 2026-03-27 |  |
| 35 | 1.2.2.1 | Revisar y comparar metodologías de investigación | 1.88d | 2026-03-25 | 2026-03-27 | 33 | start no later than 2026-03-27 | Pablo Flores |
| 36 | 1.2.2.2 | Seleccionar y justificar metodología adoptada | 1.88d | 2026-03-27 | 2026-03-31 | 35 | start no later than 2026-03-31 | Pablo Flores |
| 37 | 1.2.2.3 | Diseñar arquitectura general del experimento | 2.88d | 2026-03-31 | 2026-04-03 | 36 | start no later than 2026-04-02 | Pablo Flores |
| 38 | 1.2.2.4 | Identificar y seleccionar datasets HDL / QA | 1.88d | 2026-03-31 | 2026-04-02 | 36 | start no later than 2026-04-02 | Pablo Flores; MacBook M1 2020 |
| 39 | 1.2.2.5 | Planificar pipeline de entrenamiento y evaluación | 1.88d | 2026-04-03 | 2026-04-06 | 37 | start no later than 2026-04-07 | Pablo Flores; MacBook M1 2020 |
| 40 | 1.2.2.6 | Definir métricas y criterios de éxito del modelo | 0.88d | 2026-04-03 | 2026-04-03 | 37 | start no later than 2026-04-07 | Pablo Flores; MacBook M1 2020 |
| 41 | 1.2.2.7 | Documentar y aprobar diseño metodológico | 1.88d | 2026-04-07 | 2026-04-08 | 39, 40 | start no later than 2026-04-09 | Pablo Flores |
| 42 | 1.3 | **EJECUCIÓN** | 93d | 2026-04-08 | 2026-08-17 | 41 | start no later than 2026-04-13 |  |
| 43 | 1.3.1 | **Marco Teórico** | 20.12d | 2026-04-08 | 2026-05-06 |  | start no later than 2026-04-13 |  |
| 44 | 1.3.1.1 | Rev. bibliográfica: LLMs y arquitecturas Transformer | 2.88d | 2026-04-08 | 2026-04-13 | 41 | start no later than 2026-04-13 | Pablo Flores; MacBook M1 2020 |
| 45 | 1.3.1.2 | Rev. bibliográfica: LoRA y métodos PEFT | 3.88d | 2026-04-13 | 2026-04-17 | 44 | start no later than 2026-04-16 | Pablo Flores |
| 46 | 1.3.1.3 | Rev. bibliográfica: HDL — VHDL / Verilog | 2.88d | 2026-04-13 | 2026-04-16 | 44 | start no later than 2026-04-16 | Pablo Flores |
| 47 | 1.3.1.4 | Rev. bibliográfica: QA en diseño digital y EDA | 2.88d | 2026-04-16 | 2026-04-21 | 46 | start no later than 2026-04-21 | Pablo Flores; MacBook M1 2020 |
| 48 | 1.3.1.5 | Redactar sección — Fundamentos teóricos | 3.88d | 2026-04-21 | 2026-04-27 | 45, 47 | start no later than 2026-04-24 | Pablo Flores; MacBook M1 2020 |
| 49 | 1.3.1.6 | Redactar sección — LoRA aplicado a generación HDL | 3.88d | 2026-04-27 | 2026-05-01 | 48 | start no later than 2026-04-30 | Pablo Flores; MacBook M1 2020 |
| 50 | 1.3.1.7 | Redactar sección — Estado del arte | 2.88d | 2026-04-27 | 2026-04-30 | 48 | start no later than 2026-04-30 | Pablo Flores; MacBook M1 2020 |
| 51 | 1.3.1.8 | Revisión del marco teórico con asesor | 1.88d | 2026-05-01 | 2026-05-05 | 49, 50 | start no later than 2026-05-06 | Pablo Flores |
| 52 | 1.3.1.9 | Corrección y ajuste del marco teórico | 1.88d | 2026-05-05 | 2026-05-06 | 51 | start no later than 2026-05-08 | Pablo Flores |
| 53 | 1.3.2 | **Preprocesamiento de Datos** | 17d | 2026-04-08 | 2026-05-01 |  | start no later than 2026-04-13 |  |
| 54 | 1.3.2.1 | Catalogar datasets HDL / QA disponibles | 1.88d | 2026-04-08 | 2026-04-10 | 38 | start no later than 2026-04-13 | Pablo Flores; MacBook M1 2020 |
| 55 | 1.3.2.2 | Descargar y verificar integridad de datasets | 0.88d | 2026-04-10 | 2026-04-13 | 54 | start no later than 2026-04-15 | Pablo Flores; MacBook M1 2020 |
| 56 | 1.3.2.3 | Análisis exploratorio de datos (EDA) | 1.88d | 2026-04-13 | 2026-04-15 | 55 | start no later than 2026-04-16 | Pablo Flores; MacBook M1 2020 |
| 57 | 1.3.2.4 | Limpieza y depuración de datos | 3.88d | 2026-04-15 | 2026-04-21 | 56 | start no later than 2026-04-20 | Pablo Flores |
| 58 | 1.3.2.5 | Tokenización y formateo para fine-tuning LLM | 2.88d | 2026-04-21 | 2026-04-24 | 57 | start no later than 2026-04-24 | Pablo Flores; MacBook M1 2020 |
| 59 | 1.3.2.6 | Transformación y normalización de datos | 2.88d | 2026-04-24 | 2026-04-29 | 58 | start no later than 2026-04-29 | Pablo Flores; MacBook M1 2020 |
| 60 | 1.3.2.7 | Validación de calidad e integridad del dataset | 1.88d | 2026-04-29 | 2026-04-30 | 59 | start no later than 2026-05-04 | Pablo Flores; MacBook M1 2020 |
| 61 | 1.3.2.8 | Documentar pipeline de preprocesamiento | 0.88d | 2026-05-01 | 2026-05-01 | 60 | start no later than 2026-05-06 | Pablo Flores |

| ID | WBS | Task | Duration | Start | Finish | Predecessors | Constraint | Resources |
| --- | --- | --- | --- | --- | --- | --- | --- | --- |
| 62 | 1.3.3 | **Entrenamiento LoRA** | 28.38d | 2026-05-07 | 2026-06-16 |  | start no later than 2026-05-12 |  |
| 63 | 1.3.3.1 | Configurar entorno Python / HuggingFace en MacBook | 1.88d | 2026-05-07 | 2026-05-08 | 52, 61 | start no later than 2026-05-12 | Pablo Flores; MacBook M1 2020 |
| 64 | 1.3.3.2 | Instalar y verificar librerías PEFT / LoRA | 0.88d | 2026-05-08 | 2026-05-11 | 63 | start no later than 2026-05-14 | Pablo Flores; MacBook M1 2020 |
| 65 | 1.3.3.3 | Seleccionar y cargar modelo base LLM | 0.88d | 2026-05-11 | 2026-05-12 | 64 | start no later than 2026-05-15 | Pablo Flores; MacBook M1 2020 |
| 66 | 1.3.3.4 | Implementar cargador de datos HDL personalizado | 2.88d | 2026-05-12 | 2026-05-15 | 65 | start no later than 2026-05-18 | Pablo Flores; MacBook M1 2020 |
| 67 | 1.3.3.5 | Configurar parámetros LoRA (r, alpha, dropout) | 1.88d | 2026-05-15 | 2026-05-19 | 66 | start no later than 2026-05-21 | Pablo Flores; MacBook M1 2020 |
| 68 | 1.3.3.6 | Ejecutar entrenamiento piloto (sanity check) | 1.88d | 2026-05-19 | 2026-05-21 | 67 | start no later than 2026-05-25 | Pablo Flores; MacBook M1 2020 |
| 69 | 1.3.3.7 | Analizar métricas de pérdida y accuracy del piloto | 1.88d | 2026-05-21 | 2026-05-25 | 68 | start no later than 2026-05-27 | Pablo Flores; MacBook M1 2020 |
| 70 | 1.3.3.8 | Ajustar hiperparámetros — iteración 1 | 2.88d | 2026-05-25 | 2026-05-27 | 69 | start no later than 2026-05-29 | Pablo Flores |
| 71 | 1.3.3.9 | Ejecutar entrenamiento optimizado iteración 1 | 3.88d | 2026-05-28 | 2026-06-02 | 70 | start no later than 2026-06-03 | Pablo Flores; MacBook M1 2020 |
| 72 | 1.3.3.10 | Ajustar hiperparámetros — iteración 2 | 2.88d | 2026-06-02 | 2026-06-05 | 71 | start no later than 2026-06-09 | Pablo Flores |
| 73 | 1.3.3.11 | Ejecutar entrenamiento final (modelo definitivo) | 3.88d | 2026-06-05 | 2026-06-11 | 72 | start no later than 2026-06-12 | Pablo Flores; MacBook M1 2020 |
| 74 | 1.3.3.12 | Guardar, versionar y respaldar modelo entrenado | 0.88d | 2026-06-11 | 2026-06-12 | 73 | start no later than 2026-06-18 | Pablo Flores; MacBook M1 2020 |
| 75 | 1.3.3.13 | Documentar proceso de entrenamiento completo | 1.88d | 2026-06-12 | 2026-06-16 | 74 | start no later than 2026-06-19 | Pablo Flores; MacBook M1 2020 |
| 76 | 1.3.4 | **Evaluación Benchmark** | 13.25d | 2026-06-12 | 2026-07-01 |  | start no later than 2026-06-19 |  |
| 77 | 1.3.4.1 | Revisar benchmarks existentes para LLM / HDL | 1.88d | 2026-06-12 | 2026-06-16 | 74 | start no later than 2026-06-19 | Pablo Flores; MacBook M1 2020 |
| 78 | 1.3.4.2 | Definir métricas: BLEU, exactitud sintáctica, PASS@k | 0.88d | 2026-06-16 | 2026-06-17 | 77 | start no later than 2026-06-23 | Pablo Flores |
| 79 | 1.3.4.3 | Implementar scripts de evaluación automatizada | 2.88d | 2026-06-17 | 2026-06-22 | 78 | start no later than 2026-06-24 | Pablo Flores; MacBook M1 2020 |
| 80 | 1.3.4.4 | Ejecutar benchmark — modelo LoRA fine-tuned | 2.88d | 2026-06-22 | 2026-06-24 | 79 | start no later than 2026-06-29 | Pablo Flores; MacBook M1 2020 |
| 81 | 1.3.4.5 | Ejecutar benchmark — modelo base (baseline) | 1.88d | 2026-06-22 | 2026-06-23 | 79 | start no later than 2026-06-29 | Pablo Flores; MacBook M1 2020 |
| 82 | 1.3.4.6 | Comparar y analizar: LoRA vs baseline | 2.88d | 2026-06-25 | 2026-06-29 | 80, 81 | start no later than 2026-07-02 | Pablo Flores; MacBook M1 2020 |
| 83 | 1.3.4.7 | Documentar resultados del benchmark | 1.88d | 2026-06-29 | 2026-07-01 | 82 | start no later than 2026-07-07 | Pablo Flores; MacBook M1 2020 |
| 84 | 1.3.5 | **Análisis de Resultados** | 11.25d | 2026-07-01 | 2026-07-16 |  | start no later than 2026-07-09 |  |
| 85 | 1.3.5.1 | Compilar y consolidar todas las métricas | 0.88d | 2026-07-01 | 2026-07-02 | 83, 75 | start no later than 2026-07-09 | Pablo Flores |
| 86 | 1.3.5.2 | Análisis estadístico descriptivo de resultados | 1.88d | 2026-07-02 | 2026-07-06 | 85 | start no later than 2026-07-10 | Pablo Flores |
| 87 | 1.3.5.3 | Visualizar resultados (gráficas y tablas) | 1.88d | 2026-07-06 | 2026-07-08 | 86 | start no later than 2026-07-14 | Pablo Flores; MacBook M1 2020 |
| 88 | 1.3.5.4 | Comparar con modelos del estado del arte | 2.88d | 2026-07-08 | 2026-07-13 | 87 | start no later than 2026-07-16 | Pablo Flores; MacBook M1 2020 |
| 89 | 1.3.5.5 | Identificar fortalezas, limitaciones y trabajo futuro | 1.88d | 2026-07-13 | 2026-07-15 | 88 | start no later than 2026-07-21 | Pablo Flores |
| 90 | 1.3.5.6 | Redactar análisis e interpretación de resultados | 1.88d | 2026-07-15 | 2026-07-16 | 89 | start no later than 2026-07-23 | Pablo Flores; MacBook M1 2020 |

| ID | WBS | Task | Duration | Start | Finish | Predecessors | Constraint | Resources |
| --- | --- | --- | --- | --- | --- | --- | --- | --- |
| 91 | 1.3.6 | **Redacción del Informe Final** | 21.88d | 2026-07-17 | 2026-08-17 |  | start no later than 2026-07-27 |  |
| 92 | 1.3.6.1 | Definir estructura y capítulos del informe | 0.88d | 2026-07-17 | 2026-07-17 | 90 | start no later than 2026-07-27 | Pablo Flores |
| 93 | 1.3.6.2 | Redactar cap. 1 — Introducción | 1.88d | 2026-07-17 | 2026-07-21 | 92 | start no later than 2026-07-28 | Pablo Flores; MacBook M1 2020 |
| 94 | 1.3.6.3 | Integrar cap. 2 — Marco teórico (ajustar) | 1.88d | 2026-07-17 | 2026-07-21 | 92 | start no later than 2026-07-28 | Pablo Flores |
| 95 | 1.3.6.4 | Redactar cap. 3 — Metodología | 2.88d | 2026-07-17 | 2026-07-22 | 92 | start no later than 2026-07-28 | Pablo Flores; MacBook M1 2020 |
| 96 | 1.3.6.5 | Redactar cap. 4 — Resultados y análisis | 2.88d | 2026-07-17 | 2026-07-22 | 92 | start no later than 2026-07-28 | Pablo Flores; MacBook M1 2020 |
| 97 | 1.3.6.6 | Redactar cap. 5 — Conclusiones y recomendaciones | 1.88d | 2026-07-22 | 2026-07-24 | 93, 94, 95, 96 | start no later than 2026-07-31 | Pablo Flores; MacBook M1 2020 |
| 98 | 1.3.6.7 | Elaborar referencias bibliográficas (APA / IEEE) | 0.88d | 2026-07-24 | 2026-07-27 | 97 | start no later than 2026-08-04 | Pablo Flores |
| 99 | 1.3.6.8 | Revisar formato y estilo según normativo UNIS | 1.88d | 2026-07-27 | 2026-07-29 | 98 | start no later than 2026-08-05 | Pablo Flores; MacBook M1 2020 |
| 100 | 1.3.6.9 | Primera revisión con asesor (espera retroalim.) | 2.88d | 2026-07-29 | 2026-08-03 | 99 | start no later than 2026-08-07 | Pablo Flores |
| 101 | 1.3.6.10 | Aplicar primera ronda de correcciones | 2.88d | 2026-08-03 | 2026-08-06 | 100 | start no later than 2026-08-12 | Pablo Flores |
| 102 | 1.3.6.11 | Segunda revisión con asesor (espera retroalim.) | 4.88d | 2026-08-06 | 2026-08-12 | 101 | start no later than 2026-08-17 | Pablo Flores |
| 103 | 1.3.6.12 | Aplicar segunda ronda de correcciones | 2.88d | 2026-08-13 | 2026-08-17 | 102 | start no later than 2026-08-24 | Pablo Flores |
| 104 | 1.4 | **MONITOREO Y CONTROL** | 10.75d | 2026-02-26 | 2026-03-13 |  | start no later than 2026-02-27 |  |
| 105 | 1.4.1 | **Seguimiento** | 10.75d | 2026-02-26 | 2026-03-13 |  | start no later than 2026-02-27 |  |
| 106 | 1.4.1.1 | Planificar agenda y protocolo de reuniones | 0.88d | 2026-02-26 | 2026-02-27 | 22 | start no later than 2026-02-27 | Pablo Flores |
| 107 | 1.4.1.2 | Conducir reuniones semanales con asesor | 9.88d | 2026-02-27 | 2026-03-13 | 106 | start no later than 2026-03-02 | Pablo Flores |
| 108 | 1.4.1.3 | Elaborar reportes de avance mensuales | 4.88d | 2026-02-27 | 2026-03-06 | 106 | start no later than 2026-03-02 | Pablo Flores |
| 109 | 1.4.1.4 | Actualizar y monitorear cronograma del proyecto | 1.88d | 2026-02-27 | 2026-03-03 | 106 | start no later than 2026-03-02 | Pablo Flores |
| 110 | 1.4.2 | **Control de Cambios** | 8.5d | 2026-02-27 | 2026-03-11 |  | start no later than 2026-03-02 |  |
| 111 | 1.4.2.1 | Registrar solicitudes de cambio formales | 1.88d | 2026-02-27 | 2026-03-03 | 106 | start no later than 2026-03-02 | Pablo Flores |
| 112 | 1.4.2.2 | Evaluar y aprobar cambios con asesor | 1.88d | 2026-03-03 | 2026-03-05 | 111 | start no later than 2026-03-04 | Pablo Flores |
| 113 | 1.4.2.3 | Implementar cambios aprobados | 2.88d | 2026-03-05 | 2026-03-09 | 112 | start no later than 2026-03-06 | Pablo Flores; MacBook M1 2020 |
| 114 | 1.4.2.4 | Documentar lecciones aprendidas | 1.88d | 2026-03-10 | 2026-03-11 | 113 | start no later than 2026-03-11 | Pablo Flores |

| ID | WBS | Task | Type | Duration | Start | Finish | Predecessors | Constraint | Resources |
| --- | --- | --- | --- | --- | --- | --- | --- | --- | --- |
| 115 | 1.5 | **CIERRE** |  | 20d | 2026-08-17 | 2026-09-14 | 103 | start no later than 2026-08-27 |  |
| 116 | 1.5.1 | **Correcciones Finales** |  | 9.38d | 2026-08-17 | 2026-08-31 |  | start no later than 2026-08-27 |  |
| 117 | 1.5.1.1 | Recibir retroalimentación final del asesor |  | 0.88d | 2026-08-17 | 2026-08-18 | 103 | start no later than 2026-08-27 | Pablo Flores |
| 118 | 1.5.1.2 | Aplicar correcciones finales al documento |  | 2.88d | 2026-08-18 | 2026-08-21 | 117 | start no later than 2026-08-28 | Pablo Flores |
| 119 | 1.5.1.3 | Revisión de ortografía, gramática y estilo |  | 0.88d | 2026-08-21 | 2026-08-24 | 118 | start no later than 2026-09-02 | Pablo Flores |
| 120 | 1.5.1.4 | Formatear documento final según normativo UNIS |  | 1.88d | 2026-08-24 | 2026-08-26 | 119 | start no later than 2026-09-03 | Pablo Flores |
| 121 | 1.5.1.5 | Aprobación final y firma del asesor |  | 2.88d | 2026-08-26 | 2026-08-31 | 120 | start no later than 2026-09-07 | Pablo Flores |
| 122 | 1.5.2 | **Defensa Pública** |  | 7.38d | 2026-08-31 | 2026-09-09 |  | start no later than 2026-09-10 |  |
| 123 | 1.5.2.1 | Preparar presentación PowerPoint para defensa |  | 1.88d | 2026-08-31 | 2026-09-02 | 121 | start no later than 2026-09-10 | Pablo Flores; MacBook M1 2020 |
| 124 | 1.5.2.2 | Elaborar material de apoyo y demo técnico |  | 0.88d | 2026-09-02 | 2026-09-02 | 123 | start no later than 2026-09-14 | Pablo Flores; MacBook M1 2020 |
| 125 | 1.5.2.3 | Realizar ensayos de presentación (mínimo 3) |  | 0.88d | 2026-09-03 | 2026-09-03 | 124 | start no later than 2026-09-15 | Pablo Flores |
| 126 | 1.5.2.4 | Defensa oral ante el jurado evaluador |  | 0.88d | 2026-09-03 | 2026-09-04 | 125 | start no later than 2026-09-16 | Pablo Flores |
| 127 | 1.5.2.5 | Período de espera — resolución y nota del jurado |  | 2.88d | 2026-09-04 | 2026-09-09 | 126 | start no later than 2026-09-17 | Pablo Flores |
| 128 | 1.5.3 | **Entrega y Cierre** |  | 3.25d | 2026-09-09 | 2026-09-14 |  | start no later than 2026-09-22 |  |
| 129 | 1.5.3.1 | Aplicar correcciones indicadas por el jurado |  | 1.88d | 2026-09-09 | 2026-09-11 | 127 | start no later than 2026-09-22 | Pablo Flores |
| 130 | 1.5.3.2 | Imprimir, empastar y preparar copias finales |  | 0.5d | 2026-09-11 | 2026-09-11 | 129 | start no later than 2026-09-24 | Pablo Flores |
| 131 | 1.5.3.3 | Entrega formal a biblioteca y facultad |  | 0.38d | 2026-09-14 | 2026-09-14 | 130 |  | Pablo Flores |
| 132 | 1.5.3.4 | Cierre administrativo del proyecto |  | 0.5d | 2026-09-14 | 2026-09-14 | 131 | start no later than 2026-09-25 | Pablo Flores |
| 134 | 1 | **HITO: INICIO DEL PROYECTO** |  | 0d | 2026-02-02 | 2026-02-02 |  |  |  |
| 136 | 1 | HITO FIN: INICIO | milestone | 0d | 2026-09-14 | 2026-09-14 |  |  |  |
| 138 | 1 | HITO FIN: PLANIFICACIÓN | milestone | 0d | 2026-09-14 | 2026-09-14 |  |  |  |
| 140 | 1 | HITO FIN: EJECUCIÓN | milestone | 0d | 2026-09-14 | 2026-09-14 |  |  |  |
| 142 | 1 | HITO FIN: MONITOREO Y CONTROL | milestone | 0d | 2026-09-14 | 2026-09-14 |  |  |  |
| 144 | 1 | HITO FIN: CIERRE | milestone | 0d | 2026-09-14 | 2026-09-14 |  |  |  |

| ID | WBS | Task | Type | Duration | Start | Finish |
| --- | --- | --- | --- | --- | --- | --- |
| 146 | 0.1 | **HITO: INICIO DEL PROYECTO** |  | 0d | 2026-02-02 | 2026-02-02 |
| 147 | 0.2.1 | HITO INICIO: INICIO | milestone | 0d | 2026-02-02 | 2026-02-02 |
| 148 | 0.2.2 | HITO FIN: INICIO | milestone | 0d | 2026-02-26 | 2026-02-26 |
| 149 | 0.3.1 | HITO INICIO: PLANIFICACIÓN | milestone | 0d | 2026-02-26 | 2026-02-26 |
| 150 | 0.3.2 | HITO FIN: PLANIFICACIÓN | milestone | 0d | 2026-04-08 | 2026-04-08 |
| 151 | 0.4.1 | HITO INICIO: EJECUCIÓN | milestone | 0d | 2026-04-08 | 2026-04-08 |
| 152 | 0.4.2 | HITO FIN: EJECUCIÓN | milestone | 0d | 2026-08-17 | 2026-08-17 |
| 153 | 0.5.1 | HITO INICIO: MONITOREO Y CONTROL | milestone | 0d | 2026-02-26 | 2026-02-26 |
| 154 | 0.5.2 | HITO FIN: MONITOREO Y CONTROL | milestone | 0d | 2026-03-13 | 2026-03-13 |
| 155 | 0.6.1 | HITO INICIO: CIERRE | milestone | 0d | 2026-08-17 | 2026-08-17 |
| 156 | 0.6.2 | HITO FIN: CIERRE | milestone | 0d | 2026-09-14 | 2026-09-14 |
| 157 | 0.99 | HITO: FIN DEL PROYECTO | milestone | 0d | 2026-09-14 | 2026-09-14 |
